# S公司项目集

Schedule from a web Gantt chart, 2024-06-03 to 2024-12-17.
Saturdays and Sundays are off

## Schedule

| ID | WBS | Task | Duration | Start | Finish | Predecessors | Status |
| --- | --- | --- | --- | --- | --- | --- | --- |
| 2 | 1 | API集成 | 1d | 2024-06-03 | 2024-06-03 |  |  |
| 3 | 2 | **大模型知识库项目** | 142d | 2024-06-03 | 2024-12-17 |  |  |
| 4 | 2.1 | **项目启动** | 6d | 2024-06-03 | 2024-06-10 |  | waiting |
| 5 | 2.1.1 | 市场调研 | 6d | 2024-06-03 | 2024-06-10 |  | waiting |
| 6 | 2.1.2 | 技术调研 | 6d | 2024-06-03 | 2024-06-10 |  | waiting |
| 7 | 2.1.3 | 经济性预估 | 5d | 2024-06-03 | 2024-06-07 |  | waiting |
| 8 | 2.2 | **需求分析** | 13d | 2024-06-11 | 2024-06-27 |  |  |
| 9 | 2.2.1 | 需求收集 | 6d | 2024-06-11 | 2024-06-18 | 5, 6, 7, 4 | waiting |
| 10 | 2.2.2 | 需求调研 | 7d | 2024-06-19 | 2024-06-27 | 9 | waiting |
| 11 | 2.3 | **产品设计** | 21d | 2024-06-28 | 2024-07-26 |  |  |
| 12 | 2.3.1 | 需求冻结 | 4d | 2024-06-28 | 2024-07-03 | 10 | waiting |
| 13 | 2.3.2 | 整体设计执行 | 7d | 2024-07-04 | 2024-07-12 | 12 | waiting |
| 14 | 2.3.3 | **模块设计执行** | 10d | 2024-07-15 | 2024-07-26 |  |  |
| 15 | 2.3.3.1 | API产品设计 | 6d | 2024-07-15 | 2024-07-22 | 13 | waiting |
| 16 | 2.3.3.2 | 模型产品设计 | 10d | 2024-07-15 | 2024-07-26 | 13 | waiting |
| 17 | 2.3.3.3 | 数仓产品设计 | 6d | 2024-07-15 | 2024-07-22 | 13 | waiting |
| 18 | 2.3.3.4 | 平台产品设计 | 10d | 2024-07-15 | 2024-07-26 | 13 | waiting |
| 19 | 2.3.3.5 | 产品UI设计 | 6d | 2024-07-15 | 2024-07-22 | 13 | waiting |
| 20 | 2.4 | **技术设计** | 30d | 2024-07-29 | 2024-09-06 |  |  |
| 21 | 2.4.1 | 整体架构设计 | 10d | 2024-07-29 | 2024-08-09 | 15, 16, 17, 18, 19 | waiting |
| 22 | 2.4.2 | **模块技术设计** | 20d | 2024-08-12 | 2024-09-06 |  |  |
| 23 | 2.4.2.1 | API技术设计 | 13d | 2024-08-12 | 2024-08-28 | 21 | waiting |
| 24 | 2.4.2.2 | 识别模型技术设计 | 18d | 2024-08-12 | 2024-09-04 | 21 | waiting |
| 25 | 2.4.2.3 | 处置模型技术设计 | 20d | 2024-08-12 | 2024-09-06 | 21 | waiting |
| 26 | 2.4.2.4 | 数仓技术设计 | 6d | 2024-08-12 | 2024-08-19 | 21 | waiting |
| 27 | 2.4.2.5 | 平台技术设计 | 12d | 2024-08-12 | 2024-08-27 | 21 | waiting |

| ID | WBS | Task | Duration | Start | Finish | Predecessors | Status |
| --- | --- | --- | --- | --- | --- | --- | --- |
| 28 | 2.5 | **产品研发** | 57d | 2024-08-20 | 2024-11-06 |  |  |
| 29 | 2.5.1 | **模块研发** | 49d | 2024-08-20 | 2024-10-25 |  |  |
| 30 | 2.5.1.1 | **API模块研发** | 26d | 2024-08-29 | 2024-10-03 |  |  |
| 31 | 2.5.1.1.1 | 主接口研发 | 10d | 2024-08-29 | 2024-09-11 | 23 | waiting |
| 32 | 2.5.1.1.2 | PI层研发 | 8d | 2024-09-12 | 2024-09-23 | 31 | waiting |
| 33 | 2.5.1.1.3 | RE层研发 | 13d | 2024-09-12 | 2024-09-30 | 31 | waiting |
| 34 | 2.5.1.1.4 | BE层研发 | 16d | 2024-09-12 | 2024-10-03 | 31 | waiting |
| 35 | 2.5.1.2 | **识别模型研发** | 30d | 2024-09-05 | 2024-10-16 |  |  |
| 36 | 2.5.1.2.1 | 分类模型研发 | 30d | 2024-09-05 | 2024-10-16 | 24 | waiting |
| 37 | 2.5.1.2.2 | 负向过滤模型研发 | 25d | 2024-09-05 | 2024-10-09 | 24 | waiting |
| 38 | 2.5.1.3 | **处置模型研发** | 23d | 2024-09-09 | 2024-10-09 |  |  |
| 39 | 2.5.1.3.1 | RAG知识库研发 | 23d | 2024-09-09 | 2024-10-09 | 25 | waiting |
| 40 | 2.5.1.3.2 | LLM研发 | 20d | 2024-09-09 | 2024-10-04 | 25 | waiting |
| 41 | 2.5.1.3.3 | 识别检索模型研发 | 15d | 2024-09-09 | 2024-09-27 | 25 | waiting |
| 42 | 2.5.1.4 | **数仓研发** | 38d | 2024-08-20 | 2024-10-10 |  |  |
| 43 | 2.5.1.4.1 | 数据爬取 | 25d | 2024-08-20 | 2024-09-23 | 26 | waiting |
| 44 | 2.5.1.4.2 | 数据清洗 | 30d | 2024-08-20 | 2024-09-30 | 26 | waiting |
| 45 | 2.5.1.4.3 | 数据入库 | 8d | 2024-10-01 | 2024-10-10 | 44, 43 | waiting |
| 46 | 2.5.1.5 | **平台研发** | 16d | 2024-10-04 | 2024-10-25 |  |  |
| 47 | 2.5.1.5.1 | CONSOLE平台研发 | 12d | 2024-10-10 | 2024-10-25 | 27, 39, 40, 41 | waiting |
| 48 | 2.5.1.5.2 | ADMIN平台研发 | 12d | 2024-10-04 | 2024-10-21 | 27, 32, 33, 34 | waiting |
| 49 | 2.5.1.5.3 | OP平台研发 | 7d | 2024-10-17 | 2024-10-25 | 27, 37, 36 | waiting |
| 50 | 2.5.2 | 集成研发 | 8d | 2024-10-28 | 2024-11-06 | 47, 48, 49, 45 | waiting |
| 51 | 2.6 | **产品测试** | 56d | 2024-09-09 | 2024-11-25 |  |  |
| 52 | 2.6.1 | **测试设计** | 16d | 2024-09-09 | 2024-09-30 |  | waiting |
| 53 | 2.6.1.1 | 测试用例设计 | 10d | 2024-09-09 | 2024-09-20 | 23, 24, 25, 26, 27 | waiting |
| 54 | 2.6.1.2 | 测试方案设计 | 6d | 2024-09-23 | 2024-09-30 | 53 | waiting |

| ID | WBS | Task | Duration | Start | Finish | Predecessors | Status |
| --- | --- | --- | --- | --- | --- | --- | --- |
| 55 | 2.6.2 | **模块测试** | 25d | 2024-10-04 | 2024-11-07 |  |  |
| 56 | 2.6.2.1 | API模块测试 | 9d | 2024-10-04 | 2024-10-16 | 54, 32, 33, 34 | waiting |
| 57 | 2.6.2.2 | 识别模型测试 | 12d | 2024-10-17 | 2024-11-01 | 54, 36, 37 | waiting |
| 58 | 2.6.2.3 | 处置模型测试 | 16d | 2024-10-10 | 2024-10-31 | 54, 39, 40, 41 | waiting |
| 59 | 2.6.2.4 | 数仓测试 | 8d | 2024-10-11 | 2024-10-22 | 54, 45 | waiting |
| 60 | 2.6.2.5 | 平台测试 | 9d | 2024-10-28 | 2024-11-07 | 54, 47, 48, 49 | waiting |
| 61 | 2.6.3 | 集成测试 | 12d | 2024-11-08 | 2024-11-25 | 50, 60, 59, 58, 57, 56 | waiting |
| 62 | 2.7 | **部署与验收** | 29d | 2024-11-07 | 2024-12-17 |  |  |
| 63 | 2.7.1 | 部署方案设计 | 5d | 2024-11-07 | 2024-11-13 | 50 | waiting |
| 64 | 2.7.2 | 部署实施 | 12d | 2024-11-26 | 2024-12-11 | 61, 63 | waiting |
| 65 | 2.7.3 | 验收 | 4d | 2024-12-12 | 2024-12-17 | 64 | waiting |
